# 项目跟踪数据库-人力资源管理

Schedule from MS Project, 2024-09-20 to 2025-02-03, costs in ¥, A marks actual dates.
Microsoft

## Calendars

- 2024标准+假期: Mon-Sat 08:00-12:00, 13:00-17:00; Sun off. Exceptions (off unless hours are given): 2024-09-29 08:00-12:00, 13:00-17:00 (国庆调休), 2024-10-01 to 2024-10-07 (国庆节), 2024-10-12 08:00-12:00, 13:00-17:00 (国庆调休2), 2025-01-01 (元旦).

## Resources

| Resource | Rate |
| --- | --- |
| 项目经理 | 55 |
| 商业分析员 | 40 |
| 数据库分析员 | 40 |
| 实习生 | 20 |

## Schedule

| ID | WBS | Task | Type | Duration | Start | Finish | Predecessors | Complete | Baseline start | Baseline finish | Baseline duration | Total slack | Free slack | Constraint | Resources | Work | Actual work | Cost | Baseline cost | Actual cost |
| --- | --- | --- | --- | --- | --- | --- | --- | --- | --- | --- | --- | --- | --- | --- | --- | --- | --- | --- | --- | --- |
| 1 | 1 | 项目启动 | milestone | 0d | 2024-09-20 08:00 A | 2024-09-20 08:00 A |  | 100% | 2024-09-20 08:00 | 2024-09-20 08:00 | 0d |  |  |  |  |  |  |  |  |  |
| 2 | 2 | **启动任务** |  | 17d | 2024-09-20 08:00 A | 2024-10-15 17:00 A |  | 100% | 2024-09-20 08:00 | 2024-10-08 17:00 | 11d |  |  |  |  | 136h | 136h | 5,840 | 4,600 | 5,840 |
| 3 | 2.1 | 与项目发起人的启动会议 |  | 1d | 2024-09-20 08:00 A | 2024-09-20 17:00 A | 1 | 100% | 2024-09-20 08:00 | 2024-09-20 17:00 | 1d |  |  |  | 项目经理 [50%]; 商业分析员 [50%]; 数据库分析员 [50%] | 12h | 12h | 520 | 520 | 520 |
| 4 | 2.2 | 研究类似项目 |  | 4d | 2024-09-21 08:00 A | 2024-09-25 17:00 A | 3 | 100% | 2024-09-21 08:00 | 2024-09-26 17:00 | 5d |  |  | finish no earlier than 2024-09-25 17:00 | 商业分析员 | 32h | 32h | 1,280 | 1,600 | 1,280 |
| 5 | 2.3 | 草拟项目要求 |  | 6d | 2024-09-26 08:00 A | 2024-10-08 17:00 A | 4 | 100% | 2024-09-27 08:00 | 2024-09-29 17:00 | 3d |  |  |  | 项目经理 [50%]; 商业分析员 | 72h | 72h | 3,120 | 1,560 | 3,120 |
| 6 | 2.4 | 同发起人和其他项目干系人检查项目要求 |  | 1d | 2024-10-09 08:00 A | 2024-10-09 17:00 A | 5 | 100% | 2024-09-30 08:00 | 2024-09-30 17:00 | 1d |  |  |  | 商业分析员 [50%]; 数据库分析员 [50%]; 项目经理 [50%] | 12h | 12h | 520 | 520 | 520 |
| 7 | 2.5 | 制订项目章程 |  | 1d | 2024-10-10 08:00 A | 2024-10-10 17:00 A | 6 | 100% | 2024-10-08 08:00 | 2024-10-08 17:00 | 1d |  |  |  | 项目经理 | 8h | 8h | 400 | 400 | 400 |
| 8 | 2.6 | 签署合同 | milestone | 0d | 2024-10-15 17:00 A | 2024-10-15 17:00 A | 7 | 100% | 2024-10-08 17:00 | 2024-10-08 17:00 | 0d |  |  | start no earlier than 2024-10-11 17:00 |  |  |  |  |  |  |
| 9 | 3 | **编制任务计划** |  | 11d | 2024-10-16 08:00 | 2024-10-28 17:00 |  |  | 2024-10-09 08:00 | 2024-10-21 17:00 | 11d | 0d |  |  |  | 96.8h |  | 3,784 | 3,690 |  |
| 10 | 3.1 | 创建工作分解结构（WBS） |  | 5d | 2024-10-16 08:00 | 2024-10-21 17:00 | 8 |  | 2024-10-09 08:00 | 2024-10-14 17:00 | 5d | 0d |  |  | 商业分析员 [25%]; 实习生 [25%]; 数据库分析员 [25%]; 项目经理 [25%] | 40h |  | 1,510 | 1,500 |  |
| 11 | 3.2 | 估算工期 |  | 5d | 2024-10-22 08:00 | 2024-10-26 17:00 | 10 |  | 2024-10-15 08:00 | 2024-10-19 17:00 | 5d | 0d |  |  | 商业分析员 [25%]; 数据库分析员 [25%]; 项目经理 [25%] | 30h |  | 1,350 | 1,300 |  |
| 12 | 3.3 | 分配资源 |  | 4d | 2024-10-22 08:00 | 2024-10-25 17:00 | 10 |  | 2024-10-15 08:00 | 2024-10-18 17:00 | 4d | 1d |  |  | 项目经理 [10%] | 3.2h |  | 176 | 160 |  |
| 13 | 3.4 | 决定任务关系 |  | 2d | 2024-10-22 08:00 | 2024-10-23 17:00 | 10 |  | 2024-10-15 08:00 | 2024-10-16 17:00 | 2d | 3d |  |  | 项目经理 [10%] | 1.6h |  | 88 | 80 |  |
| 14 | 3.5 | 输入成本信息 |  | 3d | 2024-10-22 08:00 | 2024-10-24 17:00 | 10 |  | 2024-10-15 08:00 | 2024-10-17 17:00 | 3d | 1d | 0d |  | 实习生 [50%] | 12h |  | 240 | 240 |  |
| 15 | 3.6 | 预览甘特图和PERT图 |  | 1d | 2024-10-25 08:00 | 2024-10-25 17:00 | 14 |  | 2024-10-18 08:00 | 2024-10-18 17:00 | 1d | 1d |  |  | 项目经理 [25%] | 2h |  | 110 | 100 |  |
| 16 | 3.7 | 同项目干系人一起检查计划 |  | 1d | 2024-10-28 08:00 | 2024-10-28 17:00 | 11, 12, 13, 15 |  | 2024-10-21 08:00 | 2024-10-21 17:00 | 1d | 0d |  |  | 商业分析员 [25%]; 实习生 [25%]; 数据库分析员 [25%]; 项目经理 [25%] | 8h |  | 310 | 310 |  |
| 17 | 4 | **执行计划** |  | 77d | 2024-10-29 08:00 | 2025-01-27 17:00 |  |  | 2024-10-22 08:00 | 2025-01-06 17:00 | 65d | 0d |  |  |  | 500h |  | 18,400 | 18,400 |  |
| 18 | 4.1 | 分析任务 |  | 20d | 2024-10-29 08:00 | 2024-11-20 17:00 | 16 |  | 2024-10-22 08:00 | 2024-11-13 17:00 | 20d | 0d |  |  | 商业分析员 [75%] | 120h |  | 4,800 | 4,800 |  |
| 19 | 4.2 | 设计任务 |  | 30d | 2024-11-19 08:00 | 2024-12-23 17:00 | 18FS-1% |  | 2024-11-12 08:00 | 2024-12-16 17:00 | 30d | 0d |  |  | 数据库分析员 [75%] | 180h |  | 7,200 | 7,200 |  |
| 20 | 4.3 | 执行任务 |  | 20d | 2025-01-04 08:00 | 2025-01-27 17:00 | 19FS-3d |  | 2024-12-13 08:00 | 2025-01-06 17:00 | 20d | 0d |  |  | 数据库分析员 [75%]; 实习生 [50%] | 200h |  | 6,400 | 6,400 |  |
| 21 | 5 | **控制任务** |  | 81d | 2024-09-25 08:00 | 2025-01-03 17:00 |  |  | 2024-09-25 08:00 | 2024-12-18 09:00 | 67.12d | 26d |  |  |  | 51.3h |  | 1,961.5 | 1,949.5 |  |
| 22 | 5.1 | **状态报告** |  | 67.12d | 2024-09-25 08:00 | 2024-12-18 09:00 |  |  | 2024-09-25 08:00 | 2024-12-18 09:00 | 67.12d | 39.88d |  |  |  | 1.3h |  | 69.5 | 69.5 |  |
| 23 | 5.1.1 | 状态报告 1 |  | 1h | 2024-09-25 08:00 | 2024-09-25 09:00 |  |  | 2024-09-25 08:00 | 2024-09-25 09:00 | 1h | 91.88d |  | start no earlier than 2024-09-25 08:00 | 项目经理 [10%] | 0.1h |  | 5 | 5 |  |
| 24 | 5.1.2 | 状态报告 2 |  | 1h | 2024-10-08 08:00 | 2024-10-08 09:00 |  |  | 2024-10-08 08:00 | 2024-10-08 09:00 | 1h | 85.88d |  | start no earlier than 2024-10-02 08:00 | 项目经理 [10%] | 0.1h |  | 5 | 5 |  |
| 25 | 5.1.3 | 状态报告 3 |  | 1h | 2024-10-09 08:00 | 2024-10-09 09:00 |  |  | 2024-10-09 08:00 | 2024-10-09 09:00 | 1h | 84.88d |  | start no earlier than 2024-10-09 08:00 | 项目经理 [10%] | 0.1h |  | 5 | 5 |  |
| 26 | 5.1.4 | 状态报告 4 |  | 1h | 2024-10-16 08:00 | 2024-10-16 09:00 |  |  | 2024-10-16 08:00 | 2024-10-16 09:00 | 1h | 78.88d |  | start no earlier than 2024-10-16 08:00 | 项目经理 [10%] | 0.1h |  | 5 | 5 |  |
| 27 | 5.1.5 | 状态报告 5 |  | 1h | 2024-10-23 08:00 | 2024-10-23 09:00 |  |  | 2024-10-23 08:00 | 2024-10-23 09:00 | 1h | 72.88d |  | start no earlier than 2024-10-23 08:00 | 项目经理 [10%] | 0.1h |  | 5.5 | 5.5 |  |
| 28 | 5.1.6 | 状态报告 6 |  | 1h | 2024-10-30 08:00 | 2024-10-30 09:00 |  |  | 2024-10-30 08:00 | 2024-10-30 09:00 | 1h | 66.88d |  | start no earlier than 2024-10-30 08:00 | 项目经理 [10%] | 0.1h |  | 5.5 | 5.5 |  |
| 29 | 5.1.7 | 状态报告 7 |  | 1h | 2024-11-06 08:00 | 2024-11-06 09:00 |  |  | 2024-11-06 08:00 | 2024-11-06 09:00 | 1h | 60.88d |  | start no earlier than 2024-11-06 08:00 | 项目经理 [10%] | 0.1h |  | 5.5 | 5.5 |  |
| 30 | 5.1.8 | 状态报告 8 |  | 1h | 2024-11-13 08:00 | 2024-11-13 09:00 |  |  | 2024-11-13 08:00 | 2024-11-13 09:00 | 1h | 54.88d |  | start no earlier than 2024-11-13 08:00 | 项目经理 [10%] | 0.1h |  | 5.5 | 5.5 |  |
| 31 | 5.1.9 | 状态报告 9 |  | 1h | 2024-11-20 08:00 | 2024-11-20 09:00 |  |  | 2024-11-20 08:00 | 2024-11-20 09:00 | 1h | 48.88d |  | start no earlier than 2024-11-20 08:00 | 项目经理 [10%] | 0.1h |  | 5.5 | 5.5 |  |
| 32 | 5.1.10 | 状态报告 10 |  | 1h | 2024-11-27 08:00 | 2024-11-27 09:00 |  |  | 2024-11-27 08:00 | 2024-11-27 09:00 | 1h | 42.88d |  | start no earlier than 2024-11-27 08:00 | 项目经理 [10%] | 0.1h |  | 5.5 | 5.5 |  |
| 33 | 5.1.11 | 状态报告 11 |  | 1h | 2024-12-04 08:00 | 2024-12-04 09:00 |  |  | 2024-12-04 08:00 | 2024-12-04 09:00 | 1h | 36.88d |  | start no earlier than 2024-12-04 08:00 | 项目经理 [10%] | 0.1h |  | 5.5 | 5.5 |  |
| 34 | 5.1.12 | 状态报告 12 |  | 1h | 2024-12-11 08:00 | 2024-12-11 09:00 |  |  | 2024-12-11 08:00 | 2024-12-11 09:00 | 1h | 30.88d |  | start no earlier than 2024-12-11 08:00 | 项目经理 [10%] | 0.1h |  | 5.5 | 5.5 |  |
| 35 | 5.1.13 | 状态报告 13 |  | 1h | 2024-12-18 08:00 | 2024-12-18 09:00 |  |  | 2024-12-18 08:00 | 2024-12-18 09:00 | 1h | 24.88d |  | start no earlier than 2024-12-18 08:00 | 项目经理 [10%] | 0.1h |  | 5.5 | 5.5 |  |
| 36 | 5.2 | 输入项目实际信息 |  | 60d | 2024-10-25 08:00 | 2025-01-03 17:00 | 8 |  | 2024-10-09 08:00 | 2024-12-17 17:00 | 60d | 20d |  |  | 实习生 [5%] | 24h |  | 480 | 480 |  |
| 37 | 5.3 | 预览报告 |  | 60d | 2024-10-16 08:00 | 2024-12-24 17:00 | 8 |  | 2024-10-09 08:00 | 2024-12-17 17:00 | 60d | 28d |  |  | 项目经理 [5%] | 24h |  | 1,312 | 1,300 |  |
| 38 | 5.4 | 如果有必要，调整计划 |  | 1d | 2024-10-16 08:00 | 2024-10-16 17:00 | 8 |  | 2024-10-09 08:00 | 2024-10-09 17:00 | 1d | 87d |  |  | 项目经理 [25%] | 2h |  | 100 | 100 |  |

Notes:
- 1: 里程碑任务
- 2: 摘要任务
- 8: 里程碑任务
- 9: 摘要任务
- 17: 摘要任务
- 21: 摘要任务
- 22: 每周三提交一次状态报告，供发起人和其他主要干系人员了 解项目进展情况。

| ID | WBS | Task | Type | Duration | Start | Finish | Predecessors | Baseline start | Baseline finish | Baseline duration | Total slack | Resources | Work | Cost | Baseline cost |
| --- | --- | --- | --- | --- | --- | --- | --- | --- | --- | --- | --- | --- | --- | --- | --- |
| 39 | 6 | **结束任务** |  | 6d | 2025-01-28 08:00 | 2025-02-03 17:00 |  | 2025-01-07 08:00 | 2025-01-13 17:00 | 6d | 0d |  | 128h | 5,260 | 5,260 |
| 40 | 6.1 | 准备最后项目报告 |  | 3d | 2025-01-28 08:00 | 2025-01-30 17:00 | 20, 36, 37, 38 | 2025-01-07 08:00 | 2025-01-09 17:00 | 3d | 0d | 实习生 [50%]; 商业分析员; 数据库分析员; 项目经理 | 84h | 3,480 | 3,480 |
| 41 | 6.2 | 向项目干系人提交最后项目 |  | 1d | 2025-01-31 08:00 | 2025-01-31 17:00 | 40 | 2025-01-10 08:00 | 2025-01-10 17:00 | 1d | 0d | 实习生 [50%]; 商业分析员; 数据库分析员; 项目经理 | 28h | 1,160 | 1,160 |
| 42 | 6.3 | 总结项目经验和教训 |  | 2d | 2025-02-01 08:00 | 2025-02-03 17:00 | 41 | 2025-01-11 08:00 | 2025-01-13 17:00 | 2d | 0d | 商业分析员 [25%]; 实习生 [25%]; 数据库分析员 [25%]; 项目经理 [25%] | 16h | 620 | 620 |
| 43 | 7 | 项目结束 | milestone | 0d | 2025-02-03 17:00 | 2025-02-03 17:00 | 42 | 2025-01-13 17:00 | 2025-01-13 17:00 | 0d | 0d |  |  |  |  |

Notes:
- 39: 摘要任务
